# For-WBS

Schedule from MS Project XML, 2008-01-04 to 2008-01-31, status date 2007-12-07, A marks actual dates.
EXITO SOFTWARE

## Calendars

- CalendarioSabados: Mon-Fri 09:00-13:00, 15:00-19:00; Sat-Sun off. Exceptions (off unless hours are given): 2008-01-01 to 2008-01-31 09:00-13:00, 15:00-19:00.

## Resources

| Resource |
| --- |
| 90430191 - Juan Ruben Aldecoa Inda |
| 90473663 - Ivan Rivera Montoya |
| 91808821 - Jesus Alvaro Lazcano Guzman |
| 92338488 - Morgan Omar Gonzalez Escalante |
| 92078923 - Edgar Manjarrez Lopez |
| 90865707 - Fanny Judith Corral Valdetano |

## Schedule

| ID | WBS | Task | Duration | Start | Finish | Complete | Remaining | Total slack | Constraint | Resources | Work | Actual work |
| --- | --- | --- | --- | --- | --- | --- | --- | --- | --- | --- | --- | --- |
| 1 | 1 | **Mensajes Afore** | 27.06d? | 2008-01-04 18:30 A | 2008-01-31 19:00 | 83% | 4.55d? | 0d |  |  | 69.35h | 60.65h |
| 2 | 1.1 | **WF_Recepción de Petición** | 7d? | 2008-01-08 08:30 A | 2008-01-14 19:00 | 75% | 1.75d? | 17d |  |  | 1.85h | 1.85h |
| 3 | 1.1.1 | **TA-Elaborar el Documento de Aceptación de Petición** | 1d | 2008-01-08 08:30 A | 2008-01-08 19:00 | 25% | 0.75d | 23d |  |  | 0.25h | 0.25h |
| 4 | 1.1.1.1 | A1 - Elaborar el documento de aceptación de petición por el Gerente | 8h | 2008-01-08 08:30 A | 2008-01-08 19:00 | 25% | 6h | 23d | start no earlier than 2007-12-07 08:30 | 90430191 - Juan Ruben Aldecoa Inda [12.5%] | 0.25h | 0.25h |
| 5 | 1.1.2 | **TA-Elaborar el Documento de Arquitectura (solo si el proyecto es nuevo)** | 1d? | 2008-01-14 09:00 A | 2008-01-14 19:00 A | 100% |  |  |  |  | 1h | 1h |
| 6 | 1.1.2.1 | A1 - Elaborar el documento de Arquitectura por el Gerente | 8h? | 2008-01-14 09:00 A | 2008-01-14 19:00 A | 100% |  |  | start no earlier than 2008-01-14 08:30 | 90430191 - Juan Ruben Aldecoa Inda [12.5%] | 1h | 1h |
| 7 | 1.1.3 | **TA-Asignar Petición a Líder de Proyecto** | 1d? | 2008-01-09 09:00 A | 2008-01-09 19:00 A | 100% |  |  |  |  | 0.6h | 0.6h |
| 8 | 1.1.3.1 | A1 - Asignar Petición 1993144 al Líder de Proyecto por el Gerente | 8h? | 2008-01-09 09:00 A | 2008-01-09 19:00 A | 100% |  |  | start no earlier than 2008-01-09 08:30 | 90430191 - Juan Ruben Aldecoa Inda [7.5%] | 0.6h | 0.6h |
| 9 | 1.2 | **WF_Administracion de Requerimientos** | 7d? | 2008-01-10 09:00 A | 2008-01-16 19:00 | 93% | 0.52d? | 15d |  |  | 15h | 15h |
| 10 | 1.2.1 | **TA-Iniciar el Proceso de Elicitación** | 1d? | 2008-01-11 09:00 A | 2008-01-11 19:00 A | 100% |  |  |  |  | 2h | 2h |
| 11 | 1.2.1.1 | A1 - Realizar reunión con el cliente para ver detalles de los requerimientos | 8h? | 2008-01-11 09:00 A | 2008-01-11 19:00 A | 100% |  |  | start no earlier than 2008-01-11 08:30 | 90473663 - Ivan Rivera Montoya [25%] | 2h | 2h |
| 12 | 1.2.2 | **TA-Elaborar la ERS a Menor Detalle** | 1d? | 2008-01-11 08:30 | 2008-01-11 19:00 |  |  | 20d |  |  |  |  |
| 13 | 1.2.2.1 | A1 - Modificar la ERS para el proyecto CapturarAbono a menor detalle | 8h? | 2008-01-11 08:30 | 2008-01-11 19:00 |  |  | 20d | start no earlier than 2008-01-11 08:30 | 91808821 - Jesus Alvaro Lazcano Guzman [25%] |  |  |
| 14 | 1.2.3 | **Realizar Pre-Estimación e Identificación de Riesgos** | 5d? | 2008-01-10 09:00 A | 2008-01-14 19:00 | 83% | 0.83d? | 17d |  |  | 2h | 2h |
| 15 | 1.2.3.1 | A1 - Elaborar la preestimación en base a los casos de uso identificados | 40h | 2008-01-10 09:00 A | 2008-01-14 19:00 A | 100% |  |  | start no earlier than 2008-01-10 08:30 | 90473663 - Ivan Rivera Montoya [8.33%] | 2h | 2h |
| 16 | 1.2.3.2 | A1 - Realizar la identificación de riesgos con el Gerente, Líder de Proyecto | 8h? | 2008-01-14 09:00 | 2008-01-14 19:00 |  |  | 17d | start no earlier than 2008-01-14 08:30 |  |  |  |
| 17 | 1.2.4 | **TA-Elaborar ERS a Detalle** | 2d | 2008-01-14 09:00 A | 2008-01-15 19:00 A | 100% |  |  |  |  | 1h | 1h |
| 18 | 1.2.4.1 | A1 - Elaborar la ERS para el proyecto CapturarAbono a detalle | 16h | 2008-01-14 09:00 A | 2008-01-15 19:00 A | 100% |  |  | start no earlier than 2008-01-14 08:30 | 91808821 - Jesus Alvaro Lazcano Guzman [6.25%] | 1h | 1h |
| 19 | 1.2.5 | **TA-Realizar Modelo de Casos de Uso** | 2d | 2008-01-15 09:00 A | 2008-01-16 19:00 A | 100% |  |  |  |  | 4h | 4h |
| 20 | 1.2.5.1 | A1 -Modificar CU-0001-RealizarAbono | 16h | 2008-01-15 09:00 A | 2008-01-16 19:00 A | 100% |  |  | start no earlier than 2008-01-15 08:30 | 91808821 - Jesus Alvaro Lazcano Guzman [6.25%] | 1h | 1h |
| 21 | 1.2.5.2 | A2 - Elaborar CU-0008-MostrarMensajesAfore | 16h | 2008-01-15 09:00 A | 2008-01-16 19:00 A | 100% |  |  | start no earlier than 2008-01-15 08:30 | 91808821 - Jesus Alvaro Lazcano Guzman [18.75%] | 3h | 3h |
| 22 | 1.2.6 | **TA-Realizar de Interfaz de Usuario Prototipo(Si Aplica)** | 2d | 2008-01-14 09:00 A | 2008-01-15 19:00 A | 100% |  |  |  |  | 0.2h | 0.2h |
| 23 | 1.2.6.1 | A1 - Modificar interfaz prototipo 0001-CapturarAbono | 16h | 2008-01-14 09:00 A | 2008-01-15 19:00 A | 100% |  |  | start no earlier than 2008-01-14 08:30 | 91808821 - Jesus Alvaro Lazcano Guzman [1.25%] | 0.2h | 0.2h |
| 24 | 1.2.7 | **TA-Realizar Aceptación de la ERS por Líder de Proyecto y Equipo de Proyecto.** | 2d | 2008-01-15 09:00 A | 2008-01-16 19:00 A | 100% |  |  |  |  | 0.8h | 0.8h |
| 25 | 1.2.7.1 | A1 - Realizar aceptación de la ERS por el Líder de Proyecto y Equipo de Proyecto. | 16h | 2008-01-15 09:00 A | 2008-01-16 19:00 A | 100% |  |  | start no earlier than 2008-01-15 08:30 | 91808821 - Jesus Alvaro Lazcano Guzman [1.25%]; 92338488 - Morgan Omar Gonzalez Escalante [1.25%]; 90473663 - Ivan Rivera Montoya [1.25%]; 90865707 - Fanny Judith Corral Valdetano [1.25%] | 0.8h | 0.8h |

Notes:
- 1: <Agregar una descipción del proyecto>
- 2: En el WorfkFlow de Recepción de petición se realiza la captura de información con el cliente, se deberá generar el documento de aceptación de la petición y se asignara al líder de proyecto por el gerente de proyectos.
- 3: Esta tarea es para elaborar el documento de aceptación de petición.
- 5: Esta tarea es para elaborar el documento de Arquitectura, siempre y cuando el proyecto sea nuevo
- 7: Esta tarea es para realizar la asignación del lider de proyecto y asignación del equipo de proyecto, esta tarea se relaciona con la tarea de "TA-Asignar Recursos al LP", de planificación.
- 9: En el WorkFlow de administración de requerimientos se inicia con la elicitación de los requerimientos, se genera la Especificación de Requerimientos de Software (ERS), Modelo de casos de uso, casos de uso, matriz de rastreabilidad, se define la interfaz de usuario, se elabora el documento de Arquitectura. La ERS deberá ser aprovada por el cliente.
- 10: Esta tarea se planifica cuando se requiere realizar reuniones con el cliente para obtener información que se ha definido que se requiere profundizar en algún tema en particular ó aclarar detalles con el cliente.
- 12: En esta tarea se elabora la ERS a menor detalle y minimamente debe tener el alcance, objetivos y listado de funcionalidad.
- 17: En esta tarea se termina de elaborar la ERS a detalle, en esta se definen los requerimientos no funcionales, casos de uso y la fecha final de la entrega de producto.
- 19: En esta tarea se planifica una actividad por cada caso de uso, para revisar el tiempo de elaboración de los casos de uso.
- 22: Esta tarea se elabora para definir la descripcion de interfaz de usuario en esta se elaboran las interfaz prototipo del proyecto a desarrollar.
- 24: En esta tarea se realiza la reunión entre el lider de proyecto y equipo de proyecto para realizar la aceptación de los requerimientos.

| ID | WBS | Task | Duration | Start | Finish | Complete | Remaining | Total slack | Constraint | Resources | Work | Actual work |
| --- | --- | --- | --- | --- | --- | --- | --- | --- | --- | --- | --- | --- |
| 26 | 1.2.8 | **TA-Realizar Revisión de Requerimientos por Q/A** | 2d | 2008-01-15 09:00 A | 2008-01-16 19:00 A | 100% |  |  |  |  | 1h | 1h |
| 27 | 1.2.8.1 | A1 - Realizar Revisión de Requerimientos por Q/A | 16h | 2008-01-15 09:00 A | 2008-01-16 19:00 A | 100% |  |  | start no earlier than 2008-01-15 08:30 | 92338488 - Morgan Omar Gonzalez Escalante [6.25%] | 1h | 1h |
| 28 | 1.2.9 | **TA-Realizar Revisión de Requerimientos por Gerente** | 2d | 2008-01-15 09:00 A | 2008-01-16 19:00 A | 100% |  |  |  |  | 0.8h | 0.8h |
| 29 | 1.2.9.1 | A1 - Realizar Revisión de Requerimientos por Gerente | 16h | 2008-01-15 09:00 A | 2008-01-16 19:00 A | 100% |  |  | start no earlier than 2008-01-15 08:30 | 90430191 - Juan Ruben Aldecoa Inda [5%] | 0.8h | 0.8h |
| 30 | 1.2.10 | **TA-Validar Especificación de Requerimientos por Cliente** | 2d | 2008-01-15 09:00 A | 2008-01-16 19:00 A | 100% |  |  |  |  | 1h | 1h |
| 31 | 1.2.10.1 | A1 - Validar ERS por Cliente | 16h | 2008-01-15 09:00 A | 2008-01-16 19:00 A | 100% |  |  | start no earlier than 2008-01-15 08:30 | 90473663 - Ivan Rivera Montoya [6.25%] | 1h | 1h |
| 32 | 1.2.11 | **TA-Elaborar matriz de rastreabilidad** | 1d? | 2008-01-16 09:00 A | 2008-01-16 19:00 A | 100% |  |  |  |  | 1.2h | 1.2h |
| 33 | 1.2.11.1 | A1 - Elaborar matriz de rastreabilidad de Documentacion | 8h? | 2008-01-16 09:00 A | 2008-01-16 19:00 A | 100% |  |  | start no earlier than 2008-01-16 08:30 | 91808821 - Jesus Alvaro Lazcano Guzman [12.5%] | 1h | 1h |
| 34 | 1.2.11.2 | A2 - Elaborar matriz de rastreabilidad de Código | 8h? | 2008-01-16 09:00 A | 2008-01-16 19:00 A | 100% |  |  | start no earlier than 2008-01-16 08:30 | 90473663 - Ivan Rivera Montoya [2.5%] | 0.2h | 0.2h |
| 35 | 1.2.12 | **TA-Actualizar Documento de Arquitectura** | 1d? | 2008-01-14 09:00 A | 2008-01-14 19:00 A | 100% |  |  |  |  | 1h | 1h |
| 36 | 1.2.12.1 | A1 - Actualizar documento de arquitectura | 8h? | 2008-01-14 09:00 A | 2008-01-14 19:00 A | 100% |  |  | start no earlier than 2008-01-14 08:30 | 90430191 - Juan Ruben Aldecoa Inda [12.5%] | 1h | 1h |
| 37 | 1.3 | **WF_Diseño** | 2d? | 2008-01-16 09:00 A | 2008-01-17 19:00 A | 100% |  |  |  |  | 0.6h | 0.6h |
| 38 | 1.3.1 | **TA-Diseñar Base de Datos** | 2d | 2008-01-16 09:00 A | 2008-01-17 19:00 A | 100% |  |  |  |  | 0.2h | 0.2h |
| 39 | 1.3.1.1 | A1 - Diseñar Base de Datos | 16h | 2008-01-16 09:00 A | 2008-01-17 19:00 A | 100% |  |  | start no earlier than 2008-01-16 08:30 | 91808821 - Jesus Alvaro Lazcano Guzman [1.25%] | 0.2h | 0.2h |
| 40 | 1.3.2 | **TA-Diseñar Pantallas** | 1d? | 2008-01-16 09:00 A | 2008-01-16 19:00 A | 100% |  |  |  |  | 0.4h | 0.4h |
| 41 | 1.3.2.1 | A1 - Diseñar interfaz 0001-CapturarAbono | 8h? | 2008-01-16 09:00 A | 2008-01-16 19:00 A | 100% |  |  | start no earlier than 2008-01-16 08:30 | 91808821 - Jesus Alvaro Lazcano Guzman [5%] | 0.4h | 0.4h |
| 42 | 1.4 | **WF_Planificación** | 9d? | 2008-01-08 09:00 A | 2008-01-16 19:00 | 94% | 0.5d? | 15d |  |  | 12.8h | 12.8h |
| 43 | 1.4.1 | **TA-Asignar Recursos al Gerente** | 1d? | 2008-01-09 09:00 A | 2008-01-09 19:00 A | 100% |  |  |  |  | 0.3h | 0.3h |
| 44 | 1.4.1.1 | A1 - Asignación de recursos para el proyecto por Gerente | 8h? | 2008-01-09 09:00 A | 2008-01-09 19:00 A | 100% |  |  | start no earlier than 2008-01-09 08:30 | 90473663 - Ivan Rivera Montoya [3.75%] | 0.3h | 0.3h |
| 45 | 1.4.2 | **TA-Elaborar el Plan de Desarrollo de Software** | 1d? | 2008-01-14 09:00 A | 2008-01-14 19:00 A | 100% |  |  |  |  | 2h | 2h |
| 46 | 1.4.2.1 | A1 - Elaborar el plan de desarrollo del proyecto CapturarAbono | 8h? | 2008-01-14 09:00 A | 2008-01-14 19:00 A | 100% |  |  | start no earlier than 2008-01-14 08:30 | 90473663 - Ivan Rivera Montoya [25%] | 2h | 2h |
| 47 | 1.4.3 | **TA-Realizar Estimaciones** | 2d | 2008-01-14 09:00 A | 2008-01-15 19:00 A | 100% |  |  |  |  | 2h | 2h |
| 48 | 1.4.3.1 | A1 - Realizar estimación del proyecto | 16h | 2008-01-14 09:00 A | 2008-01-15 19:00 A | 100% |  |  | start no earlier than 2008-01-14 08:30 | 90473663 - Ivan Rivera Montoya [12.5%] | 2h | 2h |
| 49 | 1.4.4 | **TA-Identificar y Evaluar Riesgos** | 2d | 2008-01-14 09:00 A | 2008-01-15 19:00 A | 100% |  |  |  |  | 1h | 1h |
| 50 | 1.4.4.1 | A1 - Realizar la identificación de riesgos con el Gerente, Equipo de Proyecto, y Líder de Proyecto | 16h | 2008-01-14 09:00 A | 2008-01-15 19:00 A | 100% |  |  | start no earlier than 2008-01-14 08:30 | 90473663 - Ivan Rivera Montoya [1.25%]; 91808821 - Jesus Alvaro Lazcano Guzman [1.25%]; 92338488 - Morgan Omar Gonzalez Escalante [1.25%]; 90430191 - Juan Ruben Aldecoa Inda [1.25%]; 90865707 - Fanny Judith Corral Valdetano [1.25%] | 1h | 1h |

Notes:
- 32: En esta tarea se crea ó modifica la matriz de rastreabilidad, contemplando la ERS, requerimiento, Casos de uso, Interfaz de usuario.
- 35: En esta tarea se elabora el docuemento de arquitectura del proyecto de desarrollo de software.
- 37: En este Workflow se ponen las actividades de diseño de las interfaz de usuario y diseño de bases de datos.
- 42: En el WorkFlow de Planificación se asigna la petición y los recursos al LP por el Gerente, se elabora el plan de desarrollo de software, estimaciones, identificación de riesgos, recursos computacionales criticos, en caso de ser un proyecto iterativo se realizara el plan de iteración, se define el plan de pruebas del proyecto, el plan de despliegue, plan de aceptación de producto, plan de calidad, plan de gestión de configuración, plan de medición, se debera de realizar la aprobación del plan de desarrollo de software por el cliente.
- 43: En esta actividad se asigna a un líder de proyecto por el gerente de proyectos asi como un equipo de proyectos para el desarrollo del mismo, esta tarea se relaciona con "TA-Asignar Petición a LP", de administración de requerimientos.
- 45: Esta tarea se crea para elaborar ó modificar el plan de desarrollo de software y sus planes asociados.
- 47: En esta tarea se realiza tanto la preestimación como la estimación del proyecto final.
- 49: En esta tarea se realiza la identificación de riesgos y recursos computacionales criticos, se puede utilizar el checklist de identificación de riesgos, lluvia de ideas ó se toma la opinión de expertos.

| ID | WBS | Task | Duration | Start | Finish | Predecessors | Complete | Total slack | Constraint | Resources | Work | Actual work |
| --- | --- | --- | --- | --- | --- | --- | --- | --- | --- | --- | --- | --- |
| 51 | 1.4.5 | **TA-Elaborar Plan Iterativo (Si Aplica)** | 1d? | 2008-01-08 09:00 | 2008-01-08 19:00 |  |  | 23d |  |  |  |  |
| 52 | 1.4.5.1 | A1 - Elaborar el plan iterativo (Si Aplica) | 8h? | 2008-01-08 09:00 | 2008-01-08 19:00 |  |  | 23d | start no earlier than 2008-01-08 08:30 |  |  |  |
| 53 | 1.4.6 | **TA-Elaborar Plan de Aceptación de Producto** | 1d? | 2008-01-15 09:00 A | 2008-01-15 19:00 A |  | 100% |  |  |  | 1h | 1h |
| 54 | 1.4.6.1 | A1 - Elaborar plan de aceptación de producto | 8h? | 2008-01-15 09:00 A | 2008-01-15 19:00 A |  | 100% |  | start no earlier than 2008-01-15 08:30 | 90473663 - Ivan Rivera Montoya [12.5%] | 1h | 1h |
| 55 | 1.4.7 | **TA-Identificar el Plan de Calidad del proyecto incorporado en el Plan de Desarrollo de SW.** | 1d? | 2008-01-14 09:00 A | 2008-01-14 19:00 A |  | 100% |  |  |  | 0.4h | 0.4h |
| 56 | 1.4.7.1 | A1 -Identificar el Plan de Calidad del proyecto | 8h? | 2008-01-14 09:00 A | 2008-01-14 19:00 A |  | 100% |  | start no earlier than 2008-01-14 08:30 | 90473663 - Ivan Rivera Montoya [5%] | 0.4h | 0.4h |
| 57 | 1.4.8 | **TA-Identificar el Plan de Administración de Configuración incorporado en el Plan de Desarrollo de SW.** | 1d? | 2008-01-14 09:00 A | 2008-01-14 19:00 A |  | 100% |  |  |  | 0.5h | 0.5h |
| 58 | 1.4.8.1 | A1 - Identificar el Plan de Administración de Configuración | 8h? | 2008-01-14 09:00 A | 2008-01-14 19:00 A |  | 100% |  | start no earlier than 2008-01-14 08:30 | 90473663 - Ivan Rivera Montoya [6.25%] | 0.5h | 0.5h |
| 59 | 1.4.9 | **TA-Elaborar Plan de Pruebas del Proyecto** | 2d | 2008-01-15 09:00 A | 2008-01-16 19:00 A |  | 100% |  |  |  | 1.5h | 1.5h |
| 60 | 1.4.9.1 | A1 - Elaborar plan de pruebas de proyecto | 16h | 2008-01-15 09:00 A | 2008-01-16 19:00 A |  | 100% |  | start no earlier than 2008-01-15 08:30 | 90865707 - Fanny Judith Corral Valdetano [9.38%] | 1.5h | 1.5h |
| 61 | 1.4.10 | **TA-Identificar las Metricas del Proyecto** | 1d? | 2008-01-14 09:00 A | 2008-01-14 19:00 A |  | 100% |  |  |  | 0.1h | 0.1h |
| 62 | 1.4.10.1 | A1 - Identificar las Métricas del Proyecto | 8h? | 2008-01-14 09:00 A | 2008-01-14 19:00 A |  | 100% |  | start no earlier than 2008-01-14 08:30 | 90473663 - Ivan Rivera Montoya [1.25%] | 0.1h | 0.1h |
| 63 | 1.4.11 | **TA-Aceptar Compromisos Sobre los Planes Gerente y Equipo de Proyecto** | 2d | 2008-01-15 09:00 A | 2008-01-16 19:00 A | 45 | 100% |  |  |  | 1h | 1h |
| 64 | 1.4.11.1 | A1 - Realizar aceptación de compromisos sobre los planes por el Gerente y Equipo de Proyecto | 16h | 2008-01-15 09:00 A | 2008-01-16 19:00 A |  | 100% |  | start no earlier than 2007-12-07 08:30 | 90473663 - Ivan Rivera Montoya [1.56%]; 91808821 - Jesus Alvaro Lazcano Guzman [1.56%]; 92338488 - Morgan Omar Gonzalez Escalante [1.56%]; 90865707 - Fanny Judith Corral Valdetano [1.56%] | 1h | 1h |
| 65 | 1.4.12 | **TA-Realizar Revisión de los Planes por Q/A** | 1d? | 2008-01-15 09:00 A | 2008-01-15 19:00 A | 45 | 100% |  |  |  | 2h | 2h |
| 66 | 1.4.12.1 | A1 - Realizar la revisión de los planes por Q/A | 8h? | 2008-01-15 09:00 A | 2008-01-15 19:00 A |  | 100% |  | start no earlier than 2007-12-07 08:30 | 92338488 - Morgan Omar Gonzalez Escalante [25%] | 2h | 2h |
| 67 | 1.4.13 | **TA-Aprobar Plan de Aceptación de Producto por Cliente** | 2d? | 2008-01-15 09:00 A | 2008-01-16 19:00 A |  | 100% |  |  |  | 1h | 1h |
| 68 | 1.4.13.1 | A1 - Realizar aprobación del Plan de Aceptación de Producto por el cliente | 16h? | 2008-01-15 09:00 A | 2008-01-16 19:00 A |  | 100% |  | start no earlier than 2008-01-15 08:30 | 90473663 - Ivan Rivera Montoya [6.25%] | 1h | 1h |
| 69 | 1.5 | **WF_Monitoreo y Control** | 18.06d | 2008-01-04 18:30 A | 2008-01-22 19:00 A |  | 100% |  |  |  | 10h | 10h |
| 70 | 1.5.1 | **TA-Monitorear y Reportar el Estado del Proyecto** | 17d | 2008-01-04 18:30 A | 2008-01-21 18:30 A |  | 100% |  |  |  | 7h | 7h |
| 71 | 1.5.1.1 | **Realizar Monitoreo con el Equipo de Proyecto** | 17d | 2008-01-04 18:30 A | 2008-01-21 18:30 A |  | 100% |  |  |  | 4h | 4h |
| 72 | 1.5.1.1.1 | A1 - Realizar monitoreo con el Equipo de Proyecto | 136h | 2008-01-04 18:30 A | 2008-01-21 18:30 A |  | 100% |  | finish no earlier than 2008-01-21 18:30 | 90473663 - Ivan Rivera Montoya [1.14%]; 91808821 - Jesus Alvaro Lazcano Guzman [1.14%]; 92338488 - Morgan Omar Gonzalez Escalante [1.14%]; 90865707 - Fanny Judith Corral Valdetano [1.14%] | 4h | 4h |
| 73 | 1.5.1.2 | **Realizar Monitoreo con la Gerencia** | 17d | 2008-01-04 18:30 A | 2008-01-21 18:30 A |  | 100% |  |  |  | 3h | 3h |
| 74 | 1.5.1.2.1 | A1 - Realizar monitoreo con la gerencia | 136h | 2008-01-04 18:30 A | 2008-01-21 18:30 A |  | 100% |  | finish no earlier than 2008-01-21 18:30 | 90473663 - Ivan Rivera Montoya [1.7%]; 90430191 - Juan Ruben Aldecoa Inda [1.7%] | 3h | 3h |

Notes:
- 51: Esta tarea solo se realiza si el proyecto es iterativo, se deberá de agregar una actividad por cada iteración.
- 67: Aprobar: / - Contactos del proyecto / - Cronograma de actividades / - Fecha de entrega. / - Riesgos / -
- 69: En el WorkFlow de Monitoreo y Control se le da seguimento a avance, esfuerzo, tiempo y costo del proyecto asi como el manejo de la información, riesgos recursos computacionales criticos, ítems de acción, se prepara el cierre de ciclo de vida del proyecto y posteriormente se realiza el postmortem del proyecto.

| ID | WBS | Task | Duration | Start | Finish | Complete | Remaining | Total slack | Constraint | Resources | Work | Actual work |
| --- | --- | --- | --- | --- | --- | --- | --- | --- | --- | --- | --- | --- |
| 75 | 1.5.2 | **TA-Preparar el Cierre de Ciclo de Vida del Proyecto** | 2d | 2008-01-21 09:00 A | 2008-01-22 19:00 A | 100% |  |  |  |  | 1h | 1h |
| 76 | 1.5.2.1 | A1 - Preparar el cierre de ciclo de vida del proyecto | 16h | 2008-01-21 09:00 A | 2008-01-22 19:00 A | 100% |  |  | start no earlier than 2008-01-21 08:30 | 90473663 - Ivan Rivera Montoya [6.25%] | 1h | 1h |
| 77 | 1.5.3 | **TA-Realizar la Evaluación del Cierre de Ciclo de Vida / Proyecto** | 2d | 2008-01-21 09:00 A | 2008-01-22 19:00 A | 100% |  |  |  |  | 2h | 2h |
| 78 | 1.5.3.1 | A1 - Realizar la evaluación del cierre de ciclo de vida / proyecto | 16h | 2008-01-21 09:00 A | 2008-01-22 19:00 A | 100% |  |  | start no earlier than 2008-01-21 08:30 | 90430191 - Juan Ruben Aldecoa Inda [2.5%]; 90473663 - Ivan Rivera Montoya [2.5%]; 91808821 - Jesus Alvaro Lazcano Guzman [2.5%]; 92338488 - Morgan Omar Gonzalez Escalante [2.5%]; 90865707 - Fanny Judith Corral Valdetano [2.5%] | 2h | 2h |
| 79 | 1.6 | **WF_Medición y Analisis** | 17.06d | 2008-01-04 18:30 A | 2008-01-21 19:00 A | 100% |  |  |  |  | 4h | 4h |
| 80 | 1.6.1 | **TA-Recoletar Métricas de Proyecto** | 17d | 2008-01-04 18:30 A | 2008-01-21 18:30 A | 100% |  |  |  |  | 2h | 2h |
| 81 | 1.6.1.1 | A1 - Recolectar métricas de proyecto | 136h | 2008-01-04 18:30 A | 2008-01-21 18:30 A | 100% |  |  | finish no earlier than 2008-01-21 18:30 | 90473663 - Ivan Rivera Montoya [2.27%] | 2h | 2h |
| 82 | 1.6.2 | **TA-Recolectar Métricas de Calidad** | 8d | 2008-01-14 09:00 A | 2008-01-21 19:00 A | 100% |  |  |  |  | 2h | 2h |
| 83 | 1.6.2.1 | A1 - Recolectar métricas de calidad | 64h | 2008-01-14 09:00 A | 2008-01-21 19:00 A | 100% |  |  | start no earlier than 2008-01-14 08:30 | 92338488 - Morgan Omar Gonzalez Escalante [2.08%]; 90473663 - Ivan Rivera Montoya [2.08%] | 2h | 2h |
| 84 | 1.7 | **WF_Administración de Configuración** | 17d? | 2008-01-14 09:00 A | 2008-01-30 19:00 | 91% | 1.55d? | 1d |  |  | 6.1h | 6.1h |
| 85 | 1.7.1 | **TA-Crear Repositorios del Proyecto** | 1d? | 2008-01-14 09:00 A | 2008-01-14 19:00 A | 100% |  |  |  |  | 0.1h | 0.1h |
| 86 | 1.7.1.1 | A1 - Crear repositorios de proyecto | 8h? | 2008-01-14 09:00 A | 2008-01-14 19:00 A | 100% |  |  | start no earlier than 2008-01-14 08:30 | 90473663 - Ivan Rivera Montoya [1.25%] | 0.1h | 0.1h |
| 87 | 1.7.2 | **TA-Elaborar Reportes de Estado de Items de Configuración** | 17d | 2008-01-14 09:00 A | 2008-01-30 19:00 | 88% | 2d | 1d |  |  | 2h | 2h |
| 88 | 1.7.2.1 | A1 - Elaborar reporte de estado de ítems de configuración | 136h | 2008-01-14 09:00 A | 2008-01-30 19:00 | 88% | 16h | 1d | start no earlier than 2008-01-12 08:30 | 91808821 - Jesus Alvaro Lazcano Guzman [2.27%] | 2h | 2h |
| 89 | 1.7.3 | **TA-Realizar las Auditorías de Configuración Física** | 2d | 2008-01-16 09:00 A | 2008-01-17 19:00 A | 100% |  |  |  |  | 2h | 2h |
| 90 | 1.7.3.1 | A1 - Realizar las auditorías de configuración física | 16h | 2008-01-16 09:00 A | 2008-01-17 19:00 A | 100% |  |  | start no earlier than 2008-01-16 08:30 | 90865707 - Fanny Judith Corral Valdetano [12.5%] | 2h | 2h |
| 91 | 1.7.4 | **TA-Realizar las Auditorías de Configuración Funcional** | 2d | 2008-01-17 09:00 A | 2008-01-18 19:00 A | 100% |  |  |  |  | 2h | 2h |
| 92 | 1.7.4.1 | A1 - Realizar auditorias de configuración funcional | 16h | 2008-01-17 09:00 A | 2008-01-18 19:00 A | 100% |  |  | start no earlier than 2008-01-17 08:30 | 92338488 - Morgan Omar Gonzalez Escalante [12.5%] | 2h | 2h |
| 93 | 1.8 | **WF_Codificación** | 3d | 2008-01-16 09:00 A | 2008-01-18 19:00 | 67% | 1d | 13d |  |  | 4.5h | 4.3h |
| 94 | 1.8.1 | **TA-Realizar Codificación** | 3d | 2008-01-16 09:00 A | 2008-01-18 19:00 A | 100% |  |  |  |  | 4.3h | 4.3h |
| 95 | 1.8.1.1 | A1 - ERS-CapturarAbono - Codificar CU-0001-RealizarAbono | 16h | 2008-01-16 09:00 A | 2008-01-17 19:00 A | 100% |  |  | start no earlier than 2008-01-16 08:30 | 91808821 - Jesus Alvaro Lazcano Guzman [3.75%] | 0.6h | 0.6h |
| 96 | 1.8.1.2 | A2 - ERS-CapturarAbono - Codificar CU-0008-MostrarMensajesAfore | 16h | 2008-01-16 09:00 A | 2008-01-17 19:00 A | 100% |  |  | start no earlier than 2008-01-16 08:30 | 91808821 - Jesus Alvaro Lazcano Guzman [16.88%] | 2.7h | 2.7h |
| 97 | 1.8.1.3 | C1 - ERS-CapturarAbono - Codificar CU-0001-RealizarAbono | 16h | 2008-01-17 09:00 A | 2008-01-18 19:00 A | 100% |  |  | start no earlier than 2008-01-17 08:30 | 91808821 - Jesus Alvaro Lazcano Guzman [3.12%] | 0.5h | 0.5h |
| 98 | 1.8.1.4 | C1 - ERS-CapturarAbono - Codificar CU-0008-MostrarMensajesAfore | 16h | 2008-01-17 09:00 A | 2008-01-18 19:00 A | 100% |  |  | start no earlier than 2008-01-17 08:30 | 91808821 - Jesus Alvaro Lazcano Guzman [3.12%] | 0.5h | 0.5h |

Notes:
- 79: Este WorkFlow es para la controlar las actividades de medición y analisis, recolección de metricas de proyecto y calidad.
- 84: En este workflow se planifican las actividades de administración de configuración. / - Se deberan de crear los repositorios del proyecto tanto los de docuementación como los de codigo. / - Se generar los reportes de estado de items de configuracion y liberación de las lineas base de los proyectos de software. / - Se aplica las auditorias de configuración las auditorias fisicas y funcionales.
- 85: En esta tarea se generan la/las actividad (es) para crear los repositorios del proyecto de documentos y de fuentes.
- 87: En esta tarea se elaboran los reportes de administración de la infomación y cumplimiento de lo definido en el plan de gestion de configuración, como por ejemplo liberación de las lineas base, nombrado de los componentes ó archivos, creación de los repositorios.
- 93: En este WorkFlow se programan las actividades de codificación por cada caso de uso se debe generar una actividad de codificación, se elaboraran ramas de versionamiento para realizar la ejecución de las pruebas del proyecto por ciclos.
- 94: En esta tarea por cada casos de uso se elabora una actividad de codificación.

| ID | WBS | Task | Duration | Start | Finish | Complete | Remaining | Total slack | Constraint | Resources | Work | Actual work |
| --- | --- | --- | --- | --- | --- | --- | --- | --- | --- | --- | --- | --- |
| 99 | 1.8.2 | **TA-Integración** | 3d | 2008-01-16 09:00 | 2008-01-18 19:00 |  |  | 13d |  |  | 0.2h |  |
| 100 | 1.8.2.1 | A1 - Realizar integración de codigo para revisión | 16h | 2008-01-16 09:00 | 2008-01-17 19:00 |  |  | 14d | start no earlier than 2008-01-16 08:30 | 91808821 - Jesus Alvaro Lazcano Guzman [0.62%] | 0.1h |  |
| 101 | 1.8.2.2 | A2 - Realizar integración de codigo para revisión | 16h | 2008-01-17 09:00 | 2008-01-18 19:00 |  |  | 13d | start no earlier than 2008-01-17 08:30 | 91808821 - Jesus Alvaro Lazcano Guzman [0.62%] | 0.1h |  |
| 102 | 1.9 | **WF_Pruebas** | 3d | 2008-01-24 08:30 A | 2008-01-26 19:00 | 29% | 2.14d | 5d |  |  | 11h | 6h |
| 103 | 1.9.1 | **TA-Diseñar Casos de Prueba** | 2d | 2008-01-24 08:30 A | 2008-01-25 19:00 A | 100% |  |  |  |  | 6h | 6h |
| 104 | 1.9.1.1 | A1 - ERS-CapturarAbono - Diseñar CP-0001-RealizarAbono | 16h | 2008-01-24 08:30 A | 2008-01-25 19:00 A | 100% |  |  | start no earlier than 2008-01-15 08:30 | 90865707 - Fanny Judith Corral Valdetano [18.75%] | 3h | 3h |
| 105 | 1.9.1.2 | A1 - ERS CapturarAbono - Diseñar CP-0008-MostrarMensajesAfore | 16h | 2008-01-24 08:30 A | 2008-01-25 19:00 A | 100% |  |  | start no earlier than 2008-01-16 08:30 | 90865707 - Fanny Judith Corral Valdetano [18.75%] | 3h | 3h |
| 106 | 1.9.2 | **TA-Realizar Pruebas de Sistemas** | 2d | 2008-01-25 09:00 | 2008-01-26 19:00 |  |  | 5d |  |  | 4h |  |
| 107 | 1.9.2.1 | A1 - ERS-CapturarAbono - Probar CP-0001-RealizarAbono | 16h | 2008-01-25 09:00 | 2008-01-26 19:00 |  |  | 5d | start no earlier than 2008-01-25 08:30 | 90865707 - Fanny Judith Corral Valdetano [12.5%] | 1h |  |
| 108 | 1.9.2.2 | A2 - ERS-CapturarAbono - Probar CP-0008-MostrarMensajesAfore | 16h | 2008-01-25 09:00 | 2008-01-26 19:00 |  |  | 5d | start no earlier than 2008-01-25 08:30 | 90865707 - Fanny Judith Corral Valdetano [12.5%] | 1h |  |
| 109 | 1.9.2.3 | C1 - ERS-CapturarAbono - Probar CP-0001-RealizarAbono | 16h | 2008-01-25 09:00 | 2008-01-26 19:00 |  |  | 5d | start no earlier than 2008-01-25 08:30 | 90865707 - Fanny Judith Corral Valdetano [12.5%] | 1h |  |
| 110 | 1.9.2.4 | C1 - ERS-CapturarAbono - Probar CP-0008-MostrarMensajesAfore | 16h | 2008-01-25 09:00 | 2008-01-26 19:00 |  |  | 5d | start no earlier than 2008-01-25 08:30 | 90865707 - Fanny Judith Corral Valdetano [12.5%] | 1h |  |
| 111 | 1.9.3 | **TA-Realizar Seguimiento de Defectos** | 2d | 2008-01-25 09:00 | 2008-01-26 19:00 |  |  | 5d |  |  | 1h |  |
| 112 | 1.9.3.1 | A1 - Realizar seguimiento de defectos | 16h | 2008-01-25 09:00 | 2008-01-26 19:00 |  |  | 5d | start no earlier than 2008-01-25 08:30 | 90865707 - Fanny Judith Corral Valdetano [12.5%] | 1h |  |
| 113 | 1.10 | **WF_Q/A** | 3d | 2008-01-24 09:00 | 2008-01-26 19:00 |  |  | 5d |  |  | 2h |  |
| 114 | 1.10.1 | **TA-Realizar Auditorías del Proyecto** | 3d | 2008-01-24 09:00 | 2008-01-26 19:00 |  |  | 5d |  |  | 1h |  |
| 115 | 1.10.1.1 | A1 - Realizar auditoria del proyecto | 24h | 2008-01-24 09:00 | 2008-01-26 19:00 |  |  | 5d | start no earlier than 2008-01-24 08:30 | 92338488 - Morgan Omar Gonzalez Escalante [18.75%] | 1h |  |
| 116 | 1.10.2 | **TA-Realizar Seguimiento de Desviaciones** | 3d | 2008-01-24 09:00 | 2008-01-26 19:00 |  |  | 5d |  |  | 1h |  |
| 117 | 1.10.2.1 | A1 - Realizar seguimiento de desviaciones | 24h | 2008-01-24 09:00 | 2008-01-26 19:00 |  |  | 5d | start no earlier than 2008-01-24 08:30 | 92338488 - Morgan Omar Gonzalez Escalante [6.25%] | 1h |  |
| 118 | 1.11 | **WF_Instalación** | 1d | 2008-01-31 09:00 | 2008-01-31 19:00 |  |  | 0d |  |  | 1.5h |  |
| 119 | 1.11.1 | **TA-Aprobación de Versión de Sistema** | 1d | 2008-01-31 09:00 | 2008-01-31 19:00 |  |  | 0d |  |  | 0.5h |  |
| 120 | 1.11.1.1 | A1 - Probar Sistema | 8h | 2008-01-31 09:00 | 2008-01-31 19:00 |  |  | 0d | start no earlier than 2008-01-31 08:30 | 90473663 - Ivan Rivera Montoya [6.25%] | 0.5h |  |
| 121 | 1.11.2 | **TA-Instalar y Configurar Versión del Sistema** | 1d | 2008-01-31 09:00 | 2008-01-31 19:00 |  |  | 0d |  |  | 1h |  |
| 122 | 1.11.2.1 | A1 - Instalar y configurar la versión del sistema | 8h | 2008-01-31 09:00 | 2008-01-31 19:00 |  |  | 0d | start no earlier than 2008-01-31 08:30 |  | 1h |  |

Notes:
- 99: En esta tarea depende de los ciclos de pruebas del proyecto por cada ciclo de pruebas se genera una rama de versionamiento para pruebas, y al final por cada revisión realizada por el cliente se crea una actividad como versión final.
- 102: En este WorkFlow se realiza deberá desarrollar los cosas de pruebas una vez que se apruebe la especificación de requerimientos de software por el cliente, se realizara la ejecución de las pruebas y se dará seguimento al cierre de los defectos.
- 113: En este WorkFlow se aplica la auditoria de proyecto, y se dara seguimiento a los desvios encontrados durante la auditoria.
- 118: En este Workflow se deberan de agregar las actividades de instalación del producto.

| ID | WBS | Task | Duration | Start | Finish | Total slack | Constraint |
| --- | --- | --- | --- | --- | --- | --- | --- |
| 123 | 1.12 | **WF_Capacitaciones** | 1d? | 2008-01-11 09:00 | 2008-01-11 19:00 | 20d |  |
| 124 | 1.12.1 | **TA-Realizar Capacitaciones** | 1d? | 2008-01-11 09:00 | 2008-01-11 19:00 | 20d |  |
| 125 | 1.12.1.1 | Ejemplo : A1 - Capacitación de <Tema de la Capacitación> | 8h? | 2008-01-11 09:00 | 2008-01-11 19:00 | 20d | start no earlier than 2008-01-11 08:30 |

Notes:
- 123: En este Workflow se planifican las actividades de capacitación para el proyecto.
