# For-WBS

Schedule from MS Project, 2008-01-23 to 2008-02-12, status date 2007-12-07, A marks actual dates.
EXITO SOFTWARE

## Calendars

- CalendarioSabados: Mon-Fri 09:00-13:00, 15:00-19:00; Sat-Sun off. Exceptions (off unless hours are given): 2008-01-01 to 2008-01-31 09:00-13:00, 15:00-19:00.

## Resources

| Resource |
| --- |
| 90057881-JESUS MANUEL GARCIA VILLEGAS |
| 90473663-IVAN RIVERA MONTOYA |
| 91808821-JESUS ALVARO LAZCANO GUZMAN |
| 91576172-JOSUE RUBIO RAMIREZ |
| 92078923 - EDGAR MANJARREZ LOPEZ |
| 92324738-GABRIELA VALDEZ MUÑOZ |

## Schedule

| ID | WBS | Task | Duration | Start | Finish | Predecessors | Complete | Remaining | Total slack | Constraint | Resources | Work | Actual work |
| --- | --- | --- | --- | --- | --- | --- | --- | --- | --- | --- | --- | --- | --- |
| 1 | 1 | **Periodico Coppel** | 17d? | 2008-01-23 08:30 A | 2008-02-12 19:00 |  | 82% | 3.1d? | 0d |  |  | 71h | 67h |
| 2 | 1.1 | **WF_Recepción de Petición** | 1d? | 2008-01-23 08:30 A | 2008-01-23 19:00 A |  | 100% |  |  |  |  | 2h | 2h |
| 3 | 1.1.1 | **TA-Elaborar el Documento de Aceptación de Petición** | 1d? | 2008-01-23 08:30 A | 2008-01-23 19:00 A |  | 100% |  |  |  |  | 0.5h | 0.5h |
| 4 | 1.1.1.1 | A1 - Elaborar el documento de aceptación de petición por el Gerente | 8h? | 2008-01-23 08:30 A | 2008-01-23 19:00 A |  | 100% |  |  | start no earlier than 2007-12-07 08:30 | 90057881-JESUS MANUEL GARCIA VILLEGAS [6.2%] | 0.5h | 0.5h |
| 5 | 1.1.2 | **TA-Elaborar el Documento de Arquitectura (solo si el proyecto es nuevo)** | 1d? | 2008-01-23 08:30 A | 2008-01-23 19:00 A |  | 100% |  |  |  |  | 1h | 1h |
| 6 | 1.1.2.1 | A1 - Elaborar el documento de Arquitectura por el Gerente | 8h? | 2008-01-23 08:30 A | 2008-01-23 19:00 A |  | 100% |  |  | start no earlier than 2007-12-07 08:30 | 90057881-JESUS MANUEL GARCIA VILLEGAS [12.5%] | 1h | 1h |
| 7 | 1.1.3 | **TA-Asignar Petición a Líder de Proyecto** | 1d? | 2008-01-23 09:00 A | 2008-01-23 19:00 A |  | 100% |  |  |  |  | 0.5h | 0.5h |
| 8 | 1.1.3.1 | A1 - Asignar Petición 730 al Líder de Proyecto por el Gerente | 8h? | 2008-01-23 09:00 A | 2008-01-23 19:00 A |  | 100% |  |  | start no earlier than 2008-01-23 08:30 | 90057881-JESUS MANUEL GARCIA VILLEGAS [6.2%] | 0.5h | 0.5h |
| 9 | 1.2 | **WF_Administracion de Requerimientos** | 8d? | 2008-01-23 08:30 A | 2008-01-30 19:00 |  | 73% | 2.13d? | 5d |  |  | 14.7h | 14.7h |
| 10 | 1.2.1 | **TA-Iniciar el Proceso de Elicitación** | 1d? | 2008-01-23 08:30 A | 2008-01-23 19:00 A |  | 100% |  |  |  |  | 1h | 1h |
| 11 | 1.2.1.1 | A1 - Realizar reunión con el cliente para ver detalles de los requerimientos | 8h? | 2008-01-23 08:30 A | 2008-01-23 19:00 A |  | 100% |  |  | finish no earlier than 2007-11-20 18:30 | 90473663-IVAN RIVERA MONTOYA [12.5%] | 1h | 1h |
| 12 | 1.2.2 | **TA-Elaborar la ERS a Menor Detalle** | 1d? | 2008-01-24 09:00 A | 2008-01-24 19:00 A |  | 100% |  |  |  |  | 1h | 1h |
| 13 | 1.2.2.1 | A1 - Elaborar la ERS para el proyecto CapturarAbono a menor detalle | 8h? | 2008-01-24 09:00 A | 2008-01-24 19:00 A |  | 100% |  |  | start no earlier than 2007-11-20 08:30 | 91808821-JESUS ALVARO LAZCANO GUZMAN [12.5%] | 1h | 1h |
| 14 | 1.2.3 | **Realizar Pre-Estimación e Identificación de Riesgos** | 8d? | 2008-01-23 09:00 A | 2008-01-30 19:00 A |  | 100% |  |  |  |  | 3h | 3h |
| 15 | 1.2.3.1 | A1 - Elaborar la preestimación en base a los casos de uso identificados | 64h | 2008-01-23 09:00 A | 2008-01-30 19:00 A |  | 100% |  |  | start no earlier than 2008-01-23 08:30 | 90473663-IVAN RIVERA MONTOYA [4.2%] | 2h | 2h |
| 16 | 1.2.3.2 | A1 - Realizar la identificación de riesgos con el Gerente, Líder de Proyecto | 8h? | 2008-01-24 08:30 A | 2008-01-24 19:00 A |  | 100% |  |  | start no earlier than 2007-11-24 08:30 | 90473663-IVAN RIVERA MONTOYA [12.5%] | 1h | 1h |
| 17 | 1.2.4 | **TA-Elaborar ERS a Detalle** | 1d? | 2008-01-24 08:30 A | 2008-01-24 19:00 A |  | 100% |  |  |  |  | 1h | 1h |
| 18 | 1.2.4.1 | A1 - Elaborar la ERS para el proyecto CapturarAbono a detalle | 8h? | 2008-01-24 08:30 A | 2008-01-24 19:00 A |  | 100% |  |  | start no earlier than 2007-11-24 08:30 | 91808821-JESUS ALVARO LAZCANO GUZMAN [12.5%] | 1h | 1h |
| 19 | 1.2.5 | **TA-Realizar Modelo de Casos de Uso** | 1d? | 2008-01-24 08:30 A | 2008-01-24 19:00 A |  | 100% |  |  |  |  | 1h | 1h |
| 20 | 1.2.5.1 | A1 -Modificar CU-0007-RealizarEncuesta | 8h? | 2008-01-24 08:30 A | 2008-01-24 19:00 A |  | 100% |  |  | start no earlier than 2007-11-26 08:30 | 91808821-JESUS ALVARO LAZCANO GUZMAN [12.5%] | 1h | 1h |
| 21 | 1.2.6 | **TA-Realizar de Interfaz de Usuario Prototipo(Si Aplica)** | 1d? | 2008-01-24 08:30 A | 2008-01-24 19:00 A |  | 100% |  |  |  |  | 1h | 1h |
| 22 | 1.2.6.1 | A1 - Modificar interfaz prototipo 0001-CapturarAbono | 8h? | 2008-01-24 08:30 A | 2008-01-24 19:00 A |  | 100% |  |  | start no earlier than 2007-12-05 08:30 | 91808821-JESUS ALVARO LAZCANO GUZMAN [12.5%] | 1h | 1h |
| 23 | 1.2.7 | **TA-Realizar Aceptación de la ERS por Líder de Proyecto y Equipo de Proyecto.** | 1d? | 2008-01-28 08:30 A | 2008-01-28 19:00 A | 17 | 100% |  |  |  |  | 1h | 1h |
| 24 | 1.2.7.1 | A1 - Realizar aceptación de la ERS por el Líder de Proyecto y Equipo de Proyecto. | 8h? | 2008-01-28 08:30 A | 2008-01-28 19:00 A |  | 100% |  |  |  | 91808821-JESUS ALVARO LAZCANO GUZMAN [12.5%] | 1h | 1h |

Notes:
- 1: <Agregar una descipción del proyecto>
- 2: En el WorfkFlow de Recepción de petición se realiza la captura de información con el cliente, se deberá generar el documento de aceptación de la petición y se asignara al líder de proyecto por el gerente de proyectos.
- 3: Esta tarea es para elaborar el documento de aceptación de petición.
- 5: Esta tarea es para elaborar el documento de Arquitectura, siempre y cuando el proyecto sea nuevo
- 7: Esta tarea es para realizar la asignación del lider de proyecto y asignación del equipo de proyecto, esta tarea se relaciona con la tarea de "TA-Asignar Recursos al LP", de planificación.
- 9: En el WorkFlow de administración de requerimientos se inicia con la elicitación de los requerimientos, se genera la Especificación de Requerimientos de Software (ERS), Modelo de casos de uso, casos de uso, matriz de rastreabilidad, se define la interfaz de usuario, se elabora el documento de Arquitectura. La ERS deberá ser aprovada por el cliente.
- 10: Esta tarea se planifica cuando se requiere realizar reuniones con el cliente para obtener información que se ha definido que se requiere profundizar en algún tema en particular ó aclarar detalles con el cliente.
- 12: En esta tarea se elabora la ERS a menor detalle y minimamente debe tener el alcance, objetivos y listado de funcionalidad.
- 17: En esta tarea se termina de elaborar la ERS a detalle, en esta se definen los requerimientos no funcionales, casos de uso y la fecha final de la entrega de producto.
- 19: En esta tarea se planifica una actividad por cada caso de uso, para revisar el tiempo de elaboración de los casos de uso.
- 21: Esta tarea se elabora para definir la descripcion de interfaz de usuario en esta se elaboran las interfaz prototipo del proyecto a desarrollar.
- 23: En esta tarea se realiza la reunión entre el lider de proyecto y equipo de proyecto para realizar la aceptación de los requerimientos.

| ID | WBS | Task | Duration | Start | Finish | Predecessors | Complete | Remaining | Total slack | Constraint | Resources | Work | Actual work |
| --- | --- | --- | --- | --- | --- | --- | --- | --- | --- | --- | --- | --- | --- |
| 25 | 1.2.8 | **TA-Realizar Revisión de Requerimientos por Q/A** | 3d? | 2008-01-28 09:00 A | 2008-01-30 19:00 | 17 | 33% | 2d? | 5d |  |  | 2h | 2h |
| 26 | 1.2.8.1 | A1 - Realizar Revisión de Requerimientos por Q/A | 24h? | 2008-01-28 09:00 A | 2008-01-30 19:00 |  | 33% | 16h? | 5d | start no earlier than 2008-01-26 08:30 | 92324738-GABRIELA VALDEZ MUÑOZ [25%] | 2h | 2h |
| 27 | 1.2.9 | **TA-Realizar Revisión de Requerimientos por Gerente** | 2d | 2008-01-24 08:30 A | 2008-01-25 19:00 A |  | 100% |  |  |  |  | 0.5h | 0.5h |
| 28 | 1.2.9.1 | A1 - Realizar Revisión de Requerimientos por Gerente | 16h | 2008-01-24 08:30 A | 2008-01-25 19:00 A |  | 100% |  |  | start no earlier than 2007-12-23 08:30 | 90057881-JESUS MANUEL GARCIA VILLEGAS [3.1%] | 0.5h | 0.5h |
| 29 | 1.2.10 | **TA-Validar Especificación de Requerimientos por Cliente** | 3d | 2008-01-28 09:00 A | 2008-01-30 19:00 |  | 33% | 2d | 5d |  |  | 1h | 1h |
| 30 | 1.2.10.1 | A1 - Validar ERS por Cliente | 24h | 2008-01-28 09:00 A | 2008-01-30 19:00 |  | 33% | 16h | 5d | start no earlier than 2008-01-26 08:30 | 90473663-IVAN RIVERA MONTOYA [12.5%] | 1h | 1h |
| 31 | 1.2.11 | **TA-Elaborar matriz de rastreabilidad** | 3d? | 2008-01-28 09:00 A | 2008-01-30 19:00 |  | 33% | 2d? | 5d |  |  | 1.2h | 1.2h |
| 32 | 1.2.11.1 | A1 - Elaborar matriz de rastreabilidad de Documentacion | 24h? | 2008-01-28 09:00 A | 2008-01-30 19:00 |  | 33% | 16h? | 5d | start no earlier than 2008-01-26 08:30 | 91808821-JESUS ALVARO LAZCANO GUZMAN [12.5%] | 1h | 1h |
| 33 | 1.2.11.2 | A2 - Elaborar matriz de rastreabilidad de Código | 24h? | 2008-01-28 09:00 A | 2008-01-30 19:00 |  | 33% | 16h? | 5d | start no earlier than 2008-01-26 08:30 | 90473663-IVAN RIVERA MONTOYA [2.5%] | 0.2h | 0.2h |
| 34 | 1.2.12 | **TA-Actualizar Documento de Arquitectura** | 1d? | 2008-01-24 08:30 A | 2008-01-24 19:00 A |  | 100% |  |  |  |  | 1h | 1h |
| 35 | 1.2.12.1 | A1 - Actualizar documento de arquitectura | 8h? | 2008-01-24 08:30 A | 2008-01-24 19:00 A |  | 100% |  |  | start no earlier than 2007-12-07 08:30 | 90473663-IVAN RIVERA MONTOYA [12.5%] | 1h | 1h |
| 36 | 1.3 | **WF_Diseño** | 3d? | 2008-01-28 09:00 A | 2008-01-30 19:00 |  | 33% | 2d? | 5d |  |  | 1.2h | 1.2h |
| 37 | 1.3.1 | **TA-Diseñar Base de Datos** | 3d? | 2008-01-28 09:00 A | 2008-01-30 19:00 |  | 33% | 2d? | 5d |  |  | 0.2h | 0.2h |
| 38 | 1.3.1.1 | A1 - Diseñar Base de Datos | 24h? | 2008-01-28 09:00 A | 2008-01-30 19:00 |  | 33% | 16h? | 5d | start no earlier than 2008-01-26 08:30 | 91808821-JESUS ALVARO LAZCANO GUZMAN [2.5%] | 0.2h | 0.2h |
| 39 | 1.3.2 | **TA-Diseñar Pantallas** | 3d? | 2008-01-28 09:00 A | 2008-01-30 19:00 |  | 33% | 2d? | 5d |  |  | 1h | 1h |
| 40 | 1.3.2.1 | A1 - Diseñar interfaz 0001-CapturarAbono | 24h? | 2008-01-28 09:00 A | 2008-01-30 19:00 |  | 33% | 16h? | 5d | start no earlier than 2008-01-26 08:30 | 91808821-JESUS ALVARO LAZCANO GUZMAN [12.5%] | 1h | 1h |
| 41 | 1.4 | **WF_Planificación** | 9d? | 2008-01-23 09:00 A | 2008-01-31 19:00 |  | 77% | 2.05d? | 4d |  |  | 12.5h | 12.5h |
| 42 | 1.4.1 | **TA-Asignar Recursos al Gerente** | 1d? | 2008-01-23 09:00 A | 2008-01-23 19:00 A |  | 100% |  |  |  |  | 0.3h | 0.3h |
| 43 | 1.4.1.1 | A1 - Asignación de recursos para el proyecto por Gerente | 8h? | 2008-01-23 09:00 A | 2008-01-23 19:00 A |  | 100% |  |  | start no earlier than 2008-01-23 08:30 | 90473663-IVAN RIVERA MONTOYA [3.8%] | 0.3h | 0.3h |
| 44 | 1.4.2 | **TA-Elaborar el Plan de Desarrollo de Software** | 1d? | 2008-01-25 08:30 A | 2008-01-25 19:00 A |  | 100% |  |  |  |  | 1h | 1h |
| 45 | 1.4.2.1 | A1 - Elaborar el plan de desarrollo del proyecto CapturarAbono | 8h? | 2008-01-25 08:30 A | 2008-01-25 19:00 A |  | 100% |  |  | start no earlier than 2007-12-01 08:30 | 90473663-IVAN RIVERA MONTOYA [12.5%] | 1h | 1h |
| 46 | 1.4.3 | **TA-Realizar Estimaciones** | 2d | 2008-01-24 09:00 A | 2008-01-25 19:00 A |  | 100% |  |  |  |  | 2h | 2h |
| 47 | 1.4.3.1 | A1 - Realizar estimación del proyecto | 16h | 2008-01-24 09:00 A | 2008-01-25 19:00 A |  | 100% |  |  | start no earlier than 2008-01-24 08:30 | 90473663-IVAN RIVERA MONTOYA [12.5%] | 2h | 2h |
| 48 | 1.4.4 | **TA-Identificar y Evaluar Riesgos** | 1d? | 2008-01-24 08:30 A | 2008-01-24 19:00 A |  | 100% |  |  |  |  | 1h | 1h |
| 49 | 1.4.4.1 | A1 - Realizar la identificación de riesgos con el Gerente, Equipo de Proyecto, y Líder de Proyecto | 8h? | 2008-01-24 08:30 A | 2008-01-24 19:00 A |  | 100% |  |  | start no earlier than 2007-12-04 08:30 | 90473663-IVAN RIVERA MONTOYA [12.5%] | 1h | 1h |

Notes:
- 31: En esta tarea se crea ó modifica la matriz de rastreabilidad, contemplando la ERS, requerimiento, Casos de uso, Interfaz de usuario.
- 34: En esta tarea se elabora el docuemento de arquitectura del proyecto de desarrollo de software.
- 36: En este Workflow se ponen las actividades de diseño de las interfaz de usuario y diseño de bases de datos.
- 41: En el WorkFlow de Planificación se asigna la petición y los recursos al LP por el Gerente, se elabora el plan de desarrollo de software, estimaciones, identificación de riesgos, recursos computacionales criticos, en caso de ser un proyecto iterativo se realizara el plan de iteración, se define el plan de pruebas del proyecto, el plan de despliegue, plan de aceptación de producto, plan de calidad, plan de gestión de configuración, plan de medición, se debera de realizar la aprobación del plan de desarrollo de software por el cliente.
- 42: En esta actividad se asigna a un líder de proyecto por el gerente de proyectos asi como un equipo de proyectos para el desarrollo del mismo, esta tarea se relaciona con "TA-Asignar Petición a LP", de administración de requerimientos.
- 44: Esta tarea se crea para elaborar ó modificar el plan de desarrollo de software y sus planes asociados.
- 46: En esta tarea se realiza tanto la preestimación como la estimación del proyecto final.
- 48: En esta tarea se realiza la identificación de riesgos y recursos computacionales criticos, se puede utilizar el checklist de identificación de riesgos, lluvia de ideas ó se toma la opinión de expertos.

| ID | WBS | Task | Duration | Start | Finish | Predecessors | Complete | Remaining | Total slack | Constraint | Resources | Work | Actual work |
| --- | --- | --- | --- | --- | --- | --- | --- | --- | --- | --- | --- | --- | --- |
| 50 | 1.4.5 | **TA-Elaborar Plan Iterativo (Si Aplica)** | 1d? | 2008-01-24 09:00 | 2008-01-24 19:00 |  |  |  | 11d |  |  |  |  |
| 51 | 1.4.5.1 | A1 - Elaborar el plan iterativo (Si Aplica) | 8h? | 2008-01-24 09:00 | 2008-01-24 19:00 |  |  |  | 11d | start no earlier than 2008-01-24 08:30 |  |  |  |
| 52 | 1.4.6 | **TA-Elaborar Plan de Aceptación de Producto** | 1d? | 2008-01-25 08:30 A | 2008-01-25 19:00 A |  | 100% |  |  |  |  | 1h | 1h |
| 53 | 1.4.6.1 | A1 - Elaborar plan de aceptación de producto | 8h? | 2008-01-25 08:30 A | 2008-01-25 19:00 A |  | 100% |  |  | start no earlier than 2007-12-07 08:30 | 90473663-IVAN RIVERA MONTOYA [12.5%] | 1h | 1h |
| 54 | 1.4.7 | **TA-Identificar el Plan de Calidad del proyecto incorporado en el Plan de Desarrollo de SW.** | 1d? | 2008-01-24 08:30 A | 2008-01-24 19:00 A |  | 100% |  |  |  |  | 0.5h | 0.5h |
| 55 | 1.4.7.1 | A1 -Identificar el Plan de Calidad del proyecto | 8h? | 2008-01-24 08:30 A | 2008-01-24 19:00 A |  | 100% |  |  | start no earlier than 2007-12-07 08:30 | 90473663-IVAN RIVERA MONTOYA [6.2%] | 0.5h | 0.5h |
| 56 | 1.4.8 | **TA-Identificar el Plan de Administración de Configuración incorporado en el Plan de Desarrollo de SW.** | 1d? | 2008-01-24 09:00 A | 2008-01-24 19:00 A |  | 100% |  |  |  |  | 0.5h | 0.5h |
| 57 | 1.4.8.1 | A1 - Identificar el Plan de Administración de Configuración | 8h? | 2008-01-24 09:00 A | 2008-01-24 19:00 A |  | 100% |  |  | start no earlier than 2008-01-24 08:30 | 90473663-IVAN RIVERA MONTOYA [6.2%] | 0.5h | 0.5h |
| 58 | 1.4.9 | **TA-Elaborar Plan de Pruebas del Proyecto** | 5d | 2008-01-24 09:00 A | 2008-01-28 19:00 A |  | 100% |  |  |  |  | 2h | 2h |
| 59 | 1.4.9.1 | A1 - Elaborar plan de pruebas de proyecto | 40h | 2008-01-24 09:00 A | 2008-01-28 19:00 A |  | 100% |  |  | start no earlier than 2008-01-24 08:30 | 91576172-JOSUE RUBIO RAMIREZ [8.3%] | 2h | 2h |
| 60 | 1.4.10 | **TA-Identificar las Metricas del Proyecto** | 1d? | 2008-01-24 08:30 A | 2008-01-24 19:00 A |  | 100% |  |  |  |  | 0.2h | 0.2h |
| 61 | 1.4.10.1 | A1 - Identificar las Métricas del Proyecto | 8h? | 2008-01-24 08:30 A | 2008-01-24 19:00 A |  | 100% |  |  | start no earlier than 2007-12-07 08:30 | 90473663-IVAN RIVERA MONTOYA [2.5%] | 0.2h | 0.2h |
| 62 | 1.4.11 | **TA-Aceptar Compromisos Sobre los Planes Gerente y Equipo de Proyecto** | 3d? | 2008-01-28 09:00 A | 2008-01-30 19:00 | 44 | 33% | 2d? | 5d |  |  | 1h | 1h |
| 63 | 1.4.11.1 | A1 - Realizar aceptación de compromisos sobre los planes por el Gerente y Equipo de Proyecto | 24h? | 2008-01-28 09:00 A | 2008-01-30 19:00 |  | 33% | 16h? | 5d | start no earlier than 2007-12-07 08:30 | 90473663-IVAN RIVERA MONTOYA [12.5%] | 1h | 1h |
| 64 | 1.4.12 | **TA-Realizar Revisión de los Planes por Q/A** | 3d? | 2008-01-28 09:00 A | 2008-01-30 19:00 | 44 | 33% | 2d? | 5d |  |  | 2h | 2h |
| 65 | 1.4.12.1 | A1 - Realizar la revisión de los planes por Q/A | 24h? | 2008-01-28 09:00 A | 2008-01-30 19:00 |  | 33% | 16h? | 5d | start no earlier than 2008-01-26 08:30 | 92324738-GABRIELA VALDEZ MUÑOZ [25%] | 2h | 2h |
| 66 | 1.4.13 | **TA-Aprobar Plan de Aceptación de Producto por Cliente** | 1d | 2008-01-31 09:00 A | 2008-01-31 19:00 A | 62, 64 | 100% |  |  |  |  | 1h | 1h |
| 67 | 1.4.13.1 | A1 - Realizar aprobación del Plan de Aceptación de Producto por el cliente | 8h | 2008-01-31 09:00 A | 2008-01-31 19:00 A |  | 100% |  |  | start no earlier than 2008-01-28 08:30 | 90473663-IVAN RIVERA MONTOYA [12.5%] | 1h | 1h |
| 68 | 1.5 | **WF_Monitoreo y Control** | 2d | 2008-01-30 09:00 A | 2008-01-31 19:00 A |  | 100% |  |  |  |  | 7h | 7h |
| 69 | 1.5.1 | **TA-Monitorear y Reportar el Estado del Proyecto** | 2d | 2008-01-30 09:00 A | 2008-01-31 19:00 A |  | 100% |  |  |  |  | 4h | 4h |
| 70 | 1.5.1.1 | **Realizar Monitoreo con el Equipo de Proyecto** | 2d | 2008-01-30 09:00 A | 2008-01-31 19:00 A |  | 100% |  |  |  |  | 2h | 2h |
| 71 | 1.5.1.1.1 | A1 - Realizar monitoreo con el Equipo de Proyecto | 16h | 2008-01-30 09:00 A | 2008-01-31 19:00 A |  | 100% |  |  | start no earlier than 2008-01-30 08:30 | 90473663-IVAN RIVERA MONTOYA [12.5%] | 2h | 2h |
| 72 | 1.5.1.2 | **Realizar Monitoreo con la Gerencia** | 2d | 2008-01-30 09:00 A | 2008-01-31 19:00 A |  | 100% |  |  |  |  | 2h | 2h |
| 73 | 1.5.1.2.1 | A1 - Realizar monitoreo con la gerencia | 16h | 2008-01-30 09:00 A | 2008-01-31 19:00 A |  | 100% |  |  | start no earlier than 2008-01-30 08:30 | 90473663-IVAN RIVERA MONTOYA [12.5%] | 2h | 2h |

Notes:
- 50: Esta tarea solo se realiza si el proyecto es iterativo, se deberá de agregar una actividad por cada iteración.
- 66: Aprobar: / - Contactos del proyecto / - Cronograma de actividades / - Fecha de entrega. / - Riesgos / -
- 68: En el WorkFlow de Monitoreo y Control se le da seguimento a avance, esfuerzo, tiempo y costo del proyecto asi como el manejo de la información, riesgos recursos computacionales criticos, ítems de acción, se prepara el cierre de ciclo de vida del proyecto y posteriormente se realiza el postmortem del proyecto.

| ID | WBS | Task | Duration | Start | Finish | Predecessors | Complete | Remaining | Total slack | Constraint | Resources | Work | Actual work |
| --- | --- | --- | --- | --- | --- | --- | --- | --- | --- | --- | --- | --- | --- |
| 74 | 1.5.2 | **TA-Preparar el Cierre de Ciclo de Vida del Proyecto** | 2d | 2008-01-30 09:00 A | 2008-01-31 19:00 A |  | 100% |  |  |  |  | 1h | 1h |
| 75 | 1.5.2.1 | A1 - Preparar el cierre de ciclo de vida del proyecto | 16h | 2008-01-30 09:00 A | 2008-01-31 19:00 A |  | 100% |  |  | start no earlier than 2008-01-30 08:30 | 90473663-IVAN RIVERA MONTOYA [6.2%] | 1h | 1h |
| 76 | 1.5.3 | **TA-Realizar la Evaluación del Cierre de Ciclo de Vida / Proyecto** | 2d | 2008-01-30 09:00 A | 2008-01-31 19:00 A |  | 100% |  |  |  |  | 2h | 2h |
| 77 | 1.5.3.1 | A1 - Realizar la evaluación del cierre de ciclo de vida / proyecto | 16h | 2008-01-30 09:00 A | 2008-01-31 19:00 A |  | 100% |  |  | start no earlier than 2008-01-30 08:30 | 90057881-JESUS MANUEL GARCIA VILLEGAS [12.5%] | 2h | 2h |
| 78 | 1.6 | **WF_Medición y Analisis** | 9d | 2008-01-24 09:00 A | 2008-02-01 19:00 A | 2 | 100% |  |  |  |  | 6h | 6h |
| 79 | 1.6.1 | **TA-Recoletar Métricas de Proyecto** | 9d | 2008-01-24 09:00 A | 2008-02-01 19:00 A |  | 100% |  |  |  |  | 2h | 2h |
| 80 | 1.6.1.1 | A1 - Recolectar métricas de proyecto | 72h | 2008-01-24 09:00 A | 2008-02-01 19:00 A |  | 100% |  |  |  | 90473663-IVAN RIVERA MONTOYA [3.6%] | 2h | 2h |
| 81 | 1.6.2 | **TA-Recolectar Métricas de Calidad** | 7d | 2008-01-24 09:00 A | 2008-01-30 19:00 A |  | 100% |  |  |  |  | 4h | 4h |
| 82 | 1.6.2.1 | A1 - Recolectar métricas de calidad | 56h | 2008-01-24 09:00 A | 2008-01-30 19:00 A |  | 100% |  |  |  | 92324738-GABRIELA VALDEZ MUÑOZ [10%] | 4h | 4h |
| 83 | 1.7 | **WF_Administración de Configuración** | 9d? | 2008-01-24 09:00 A | 2008-02-01 19:00 A | 2 | 100% |  |  |  |  | 6.1h | 6.1h |
| 84 | 1.7.1 | **TA-Crear Repositorios del Proyecto** | 1d? | 2008-01-25 09:00 A | 2008-01-25 19:00 A |  | 100% |  |  |  |  | 0.1h | 0.1h |
| 85 | 1.7.1.1 | A1 - Crear repositorios de proyecto | 8h? | 2008-01-25 09:00 A | 2008-01-25 19:00 A |  | 100% |  |  | start no earlier than 2008-01-25 08:30 | 90473663-IVAN RIVERA MONTOYA [1.2%] | 0.1h | 0.1h |
| 86 | 1.7.2 | **TA-Elaborar Reportes de Estado de Items de Configuración** | 9d | 2008-01-24 09:00 A | 2008-02-01 19:00 A |  | 100% |  |  |  |  | 2h | 2h |
| 87 | 1.7.2.1 | A1 - Elaborar reporte de estado de ítems de configuración | 72h | 2008-01-24 09:00 A | 2008-02-01 19:00 A |  | 100% |  |  |  | 91808821-JESUS ALVARO LAZCANO GUZMAN [3.6%] | 2h | 2h |
| 88 | 1.7.3 | **TA-Realizar las Auditorías de Configuración Física** | 2d | 2008-01-28 09:00 A | 2008-01-29 19:00 A |  | 100% |  |  |  |  | 2h | 2h |
| 89 | 1.7.3.1 | A1 - Realizar las auditorías de configuración física | 16h | 2008-01-28 09:00 A | 2008-01-29 19:00 A |  | 100% |  |  | start no earlier than 2008-01-28 08:30 | 91576172-JOSUE RUBIO RAMIREZ [12.5%] | 2h | 2h |
| 90 | 1.7.4 | **TA-Realizar las Auditorías de Configuración Funcional** | 2d | 2008-01-30 09:00 A | 2008-01-31 19:00 A |  | 100% |  |  |  |  | 2h | 2h |
| 91 | 1.7.4.1 | A1 - Realizar auditorias de configuración funcional | 16h | 2008-01-30 09:00 A | 2008-01-31 19:00 A |  | 100% |  |  | start no earlier than 2008-01-30 08:30 | 92324738-GABRIELA VALDEZ MUÑOZ [12.5%] | 2h | 2h |
| 92 | 1.8 | **WF_Codificación** | 4d | 2008-01-25 09:00 A | 2008-01-28 19:00 | 30 | 75% | 1d | 6d |  |  | 6.5h | 6.5h |
| 93 | 1.8.1 | **TA-Realizar Codificación** | 4d | 2008-01-25 09:00 A | 2008-01-28 19:00 |  | 67% | 1.33d | 6d |  |  | 6h | 6h |
| 94 | 1.8.1.1 | A1 - ERS-CapturarAbono - Modificar CU-0007-RealizarEncuesta | 16h | 2008-01-25 09:00 A | 2008-01-26 19:00 |  | 50% | 8h | 8d | start no earlier than 2008-01-25 08:30 | 91808821-JESUS ALVARO LAZCANO GUZMAN [37.5%] | 3h | 3h |
| 95 | 1.8.1.2 | C1 - ERS-CapturarAbono - Modificar CU-0007-RealizarEncuesta | 8h | 2008-01-28 09:00 A | 2008-01-28 19:00 A |  | 100% |  |  | start no earlier than 2008-01-28 08:30 | 91808821-JESUS ALVARO LAZCANO GUZMAN [37.5%] | 3h | 3h |
| 96 | 1.8.2 | **TA-Integración** | 1d | 2008-01-28 09:00 A | 2008-01-28 19:00 A |  | 100% |  |  |  |  | 0.5h | 0.5h |
| 97 | 1.8.2.1 | A1 - Realizar integración de codigo para revisión | 8h | 2008-01-28 09:00 A | 2008-01-28 19:00 A |  | 100% |  |  | start no earlier than 2008-01-28 08:30 | 91808821-JESUS ALVARO LAZCANO GUZMAN [6.2%] | 0.5h | 0.5h |

Notes:
- 78: Este WorkFlow es para la controlar las actividades de medición y analisis, recolección de metricas de proyecto y calidad.
- 83: En este workflow se planifican las actividades de administración de configuración. / - Se deberan de crear los repositorios del proyecto tanto los de docuementación como los de codigo. / - Se generar los reportes de estado de items de configuracion y liberación de las lineas base de los proyectos de software. / - Se aplica las auditorias de configuración las auditorias fisicas y funcionales.
- 84: En esta tarea se generan la/las actividad (es) para crear los repositorios del proyecto de documentos y de fuentes.
- 86: En esta tarea se elaboran los reportes de administración de la infomación y cumplimiento de lo definido en el plan de gestion de configuración, como por ejemplo liberación de las lineas base, nombrado de los componentes ó archivos, creación de los repositorios.
- 92: En este WorkFlow se programan las actividades de codificación por cada caso de uso se debe generar una actividad de codificación, se elaboraran ramas de versionamiento para realizar la ejecución de las pruebas del proyecto por ciclos.
- 93: En esta tarea por cada casos de uso se elabora una actividad de codificación.
- 96: En esta tarea depende de los ciclos de pruebas del proyecto por cada ciclo de pruebas se genera una rama de versionamiento para pruebas, y al final por cada revisión realizada por el cliente se crea una actividad como versión final.

| ID | WBS | Task | Duration | Start | Finish | Predecessors | Complete | Total slack | Constraint | Resources | Work | Actual work |
| --- | --- | --- | --- | --- | --- | --- | --- | --- | --- | --- | --- | --- |
| 98 | 1.9 | **WF_Pruebas** | 6d? | 2008-01-28 09:00 A | 2008-02-04 19:00 A |  | 100% |  |  |  | 9h | 9h |
| 99 | 1.9.1 | **TA-Diseñar Casos de Prueba** | 2d | 2008-01-28 09:00 A | 2008-01-29 19:00 A |  | 100% |  |  |  | 3h | 3h |
| 100 | 1.9.1.1 | A1 - ERS-CapturarAbono - Diseñar CP-0007-RealizarEncuesta | 16h | 2008-01-28 09:00 A | 2008-01-29 19:00 A |  | 100% |  | start no earlier than 2008-01-28 08:30 | 91576172-JOSUE RUBIO RAMIREZ [18.8%] | 3h | 3h |
| 101 | 1.9.2 | **TA-Realizar Pruebas de Sistemas** | 4d | 2008-01-30 09:00 A | 2008-02-04 19:00 A |  | 100% |  |  |  | 4h | 4h |
| 102 | 1.9.2.1 | A1 - ERS-CapturarAbono - Probar CP-0007-RealizarEncuesta | 16h | 2008-02-01 09:00 A | 2008-02-04 19:00 A | 103 | 100% |  |  | 91576172-JOSUE RUBIO RAMIREZ [18.8%] | 3h | 3h |
| 103 | 1.9.2.2 | C1 - ERS-CapturarAbono - Probar CP-0007-RealizarEncuesta | 16h | 2008-01-30 09:00 A | 2008-01-31 19:00 A | 102 | 100% |  | start no earlier than 2008-01-30 08:30 | 91576172-JOSUE RUBIO RAMIREZ [6.2%] | 1h | 1h |
| 104 | 1.9.3 | **TA-Realizar Seguimiento de Defectos** | 1d? | 2008-01-28 09:00 A | 2008-01-28 19:00 A |  | 100% |  |  |  | 2h | 2h |
| 105 | 1.9.3.1 | A1 - Realizar seguimiento de defectos | 8h? | 2008-01-28 09:00 A | 2008-01-28 19:00 A |  | 100% |  | start no earlier than 2008-01-28 08:30 | 91576172-JOSUE RUBIO RAMIREZ [25%] | 2h | 2h |
| 106 | 1.10 | **WF_Q/A** | 1d? | 2008-02-12 09:00 | 2008-02-12 19:00 | 2 |  | 0d |  |  | 4h |  |
| 107 | 1.10.1 | **TA-Realizar Auditorías del Proyecto** | 1d? | 2008-02-12 09:00 | 2008-02-12 19:00 |  |  | 0d |  |  | 3h |  |
| 108 | 1.10.1.1 | A1 - Realizar auditoria del proyecto Pendiente | 8h? | 2008-02-12 09:00 | 2008-02-12 19:00 |  |  | 0d | start no earlier than 2008-02-12 08:30 | 92324738-GABRIELA VALDEZ MUÑOZ [37.5%] | 3h |  |
| 109 | 1.10.2 | **TA-Realizar Seguimiento de Desviaciones** | 1d | 2008-02-12 09:00 | 2008-02-12 19:00 |  |  | 0d |  |  | 1h |  |
| 110 | 1.10.2.1 | A1 - Realizar seguimiento de desviaciones | 8h | 2008-02-12 09:00 | 2008-02-12 19:00 |  |  | 0d | start no earlier than 2008-02-12 08:30 | 92324738-GABRIELA VALDEZ MUÑOZ [12.5%] | 1h |  |
| 111 | 1.11 | **WF_Instalación** | 1d? | 2008-02-06 09:00 A | 2008-02-06 19:00 A | 92, 98 | 100% |  |  |  | 2h | 2h |
| 112 | 1.11.1 | **TA-Aprobación de Versión de Sistema** | 1d? | 2008-02-06 09:00 A | 2008-02-06 19:00 A |  | 100% |  |  |  | 1h | 1h |
| 113 | 1.11.1.1 | A1 - Probar Sistema | 8h? | 2008-02-06 09:00 A | 2008-02-06 19:00 A |  | 100% |  | start no earlier than 2008-02-06 08:30 | 90473663-IVAN RIVERA MONTOYA [12.5%] | 1h | 1h |
| 114 | 1.11.2 | **TA-Instalar y Configurar Versión del Sistema** | 1d? | 2008-02-06 09:00 A | 2008-02-06 19:00 A |  | 100% |  |  |  | 1h | 1h |
| 115 | 1.11.2.1 | A1 - Instalar y configurar la versión del sistema | 8h? | 2008-02-06 09:00 A | 2008-02-06 19:00 A |  | 100% |  | start no earlier than 2008-02-06 08:30 | 91576172-JOSUE RUBIO RAMIREZ [12.5%] | 1h | 1h |
| 116 | 1.12 | **WF_Capacitaciones** | 1d? | 2008-01-24 09:00 | 2008-01-24 19:00 |  |  | 11d |  |  |  |  |
| 117 | 1.12.1 | **TA-Realizar Capacitaciones** | 1d? | 2008-01-24 09:00 | 2008-01-24 19:00 |  |  | 11d |  |  |  |  |
| 118 | 1.12.1.1 | Ejemplo : A1 - Capacitación de <Tema de la Capacitación> | 8h? | 2008-01-24 09:00 | 2008-01-24 19:00 |  |  | 11d | start no earlier than 2008-01-24 08:30 |  |  |  |

Notes:
- 98: En este WorkFlow se realiza deberá desarrollar los cosas de pruebas una vez que se apruebe la especificación de requerimientos de software por el cliente, se realizara la ejecución de las pruebas y se dará seguimento al cierre de los defectos.
- 106: En este WorkFlow se aplica la auditoria de proyecto, y se dara seguimiento a los desvios encontrados durante la auditoria.
- 111: En este Workflow se deberan de agregar las actividades de instalación del producto.
- 116: En este Workflow se planifican las actividades de capacitación para el proyecto.
